How a schedule from OmniPlan changed from version to version. A marks actual dates.

## Version 1 (saved 2017-12-19)

Note of the change: activiti 测试

| ID | WBS | Task | Start | Complete | Constraint |
| --- | --- | --- | --- | --- | --- |
| 1 | 1 | **设计** |  |  |  |
| 2 | 1.1 | **数据库设计** |  |  |  |
| 3 |  | 权限、人员、组 | 2017-12-21 |  |  |
| 4 |  | 工单基础信息表 | 2017-12-19 |  | start no earlier than 2017-12-19 |
| 5 |  | 工单应用信息表 | 2017-12-21 | 80% |  |
| 6 |  | 工单流转信息表 | 2017-12-21 | 80% |  |
| 7 |  | 工单流转日志表 | 2017-12-19 |  | start no earlier than 2017-12-19 |
| 8 |  | 关闭工单评价表 | 2017-12-19 |  | start no earlier than 2017-12-19 |
| 9 | 1.2 | **功能设计** |  |  | finish no later than 2017-12-20 |
| 10 |  | 业务、审批人、处理人权限与角色 | 2017-12-20 | 100% |  |
| 11 |  | 元素 | 2017-12-19 |  | start no earlier than 2017-12-19 |
| 12 |  | 复制功能 | 2017-12-19 |  | start no earlier than 2017-12-19 |
| 13 |  | 工单搜索 | 2017-12-19 |  | start no earlier than 2017-12-19 |
| 14 |  | 工单进度显示 | 2017-12-19 |  | start no earlier than 2017-12-19 |
| 15 |  | 任务提醒、通知实现 | 2017-12-19 |  | start no earlier than 2017-12-19 |
| 16 |  | 附件上传 | 2017-12-19 |  | start no earlier than 2017-12-19 |
| 17 |  | 附件下载 | 2017-12-19 |  | start no earlier than 2017-12-19 |
| 18 |  | 业务流程设计 | 2017-12-20 | 67% |  |
| 19 | 1.4 | **界面设计** |  |  |  |
| 20 |  | 创建工单 | 2017-12-21 | 100% |  |
| 21 |  | 保存工单 | 2017-12-21 | 100% |  |
| 22 |  | 修改工单 | 2017-12-21 | 100% |  |
| 23 |  | 提交工单 | 2017-12-21 | 100% |  |
| 24 |  | 复制工单 | 2017-12-21 | 100% |  |
| 25 |  | 关闭工单 | 2017-12-21 | 100% |  |
| 26 |  | 查询工单 | 2017-12-21 | 100% |  |
| 27 |  | 处理工单 | 2017-12-21 | 100% |  |
| 28 |  | 处理反馈工单 | 2017-12-21 | 100% |  |
| 29 |  | 系统审批工单 | 2017-12-21 | 100% |  |
| 30 |  | 邮件审批工单 | 2017-12-21 | 100% |  |
| 31 | 2 | **开发** |  |  |  |
| 32 |  | 创建工单 | 2017-12-21 | 100% |  |
| 33 |  | 保存工单 | 2017-12-21 | 100% |  |
| 34 |  | 修改工单 | 2017-12-21 | 100% |  |
| 35 |  | 提交工单 | 2017-12-21 | 100% |  |
| 36 |  | 复制工单 | 2017-12-21 | 100% |  |
| 37 |  | 关闭工单 | 2017-12-21 | 100% |  |
| 38 |  | 查询工单 | 2017-12-21 | 100% |  |
| 39 |  | 处理工单 | 2017-12-21 | 100% |  |
| 40 |  | 处理反馈工单 | 2017-12-21 | 100% |  |
| 41 |  | 系统审批工单 | 2017-12-21 | 100% |  |
| 42 |  | 邮件审批工单 | 2017-12-21 | 100% |  |

## Version 2 (saved 2017-12-25)

Note of the change: 解析

Complete tasks 23 → 32.

Added:

| ID | Task | Start | Constraint | Resources |
| --- | --- | --- | --- | --- |
| 37 | 工单复制 | 2017-12-28 |  | 周游 |
| 42 | 附件加密及附件的存储、获取api | 2017-12-28 |  | 黎杰 |
| 45 | 数据字段表获取实现 | 2017-12-22 | start no earlier than 2017-12-22 |  |
| 46 | 待办实现、首页通知？ | 2017-12-28 |  |  |
| 47 | 消息？ | 2017-12-28 |  |  |

Changed:

| ID | Task | Start | Complete | Other |
| --- | --- | --- | --- | --- |
| 3 | 权限、人员、组 | 2017-12-21 → 2017-12-26 (+5d) | 0% → 100% |  |
| 4 | 工单基础信息表 | 2017-12-19 → 2017-12-25 (+6d) | 0% → 100% | resources none → 贾东坡 |
| 5 | 工单应用信息表 | 2017-12-21 → 2017-12-28 (+7d) | 80% → 50% |  |
| 6 | 工单流转信息表 | 2017-12-21 → 2017-12-28 (+7d) | 80% → 50% |  |
| 7 | 工单流转日志表 | 2017-12-19 → 2017-12-22 (+3d) | 0% → 100% | resources none → 贾东坡 |
| 8 | 关闭工单评价表 | 2017-12-19 → 2017-12-22 (+3d) | 0% → 100% | resources none → 贾东坡 |
| 11 | 元素 | 2017-12-19 → 2017-12-27 (+8d) | 0% → 100% |  |
| 12 | 复制功能 | 2017-12-19 → 2017-12-26 (+7d) | 0% → 100% |  |
| 13 | 工单搜索 | 2017-12-19 → 2017-12-26 (+7d) | 0% → 100% |  |
| 14 | 工单进度显示 | 2017-12-19 → 2017-12-26 (+7d) | 0% → 100% |  |
| 15 | 任务提醒、通知实现 | 2017-12-19 → 2017-12-26 (+7d) | 0% → 100% |  |
| 16 | 附件上传 | 2017-12-19 → 2017-12-26 (+7d) | 0% → 100% |  |
| 17 | 附件下载 | 2017-12-19 → 2017-12-26 (+7d) | 0% → 100% |  |
| 18 | 业务流程设计 | 2017-12-20 → 2017-12-22 (+2d) | 67% → 100% |  |
| 20 | 创建工单 | 2017-12-21 → 2017-12-20 (-1d) |  | resources 贾东坡 → 贾东坡; 周游 |
| 21 | 保存工单 | 2017-12-21 → 2017-12-20 (-1d) |  | resources 贾东坡 → 贾东坡; 周游 |
| 22 | 修改工单 | 2017-12-21 → 2017-12-20 (-1d) |  | resources 贾东坡 → 贾东坡; 周游 |
| 23 | 提交工单 | 2017-12-21 → 2017-12-20 (-1d) |  | resources 贾东坡 → 贾东坡; 周游 |
| 24 | 复制工单 | 2017-12-21 → 2017-12-20 (-1d) |  | resources 贾东坡 → 贾东坡; 周游 |
| 25 | 关闭工单 | 2017-12-21 → 2017-12-20 (-1d) |  | resources 贾东坡 → 贾东坡; 周游 |
| 26 | 查询工单 | 2017-12-21 → 2017-12-20 (-1d) |  | resources 贾东坡 → 贾东坡; 周游 |
| 27 | 处理工单 | 2017-12-21 → 2017-12-20 (-1d) |  | resources 贾东坡 → 贾东坡; 周游 |
| 28 | 处理反馈工单 | 2017-12-21 → 2017-12-20 (-1d) |  | resources 贾东坡 → 贾东坡; 周游 |
| 29 | 系统审批工单 | 2017-12-21 → 2017-12-20 (-1d) |  | resources 贾东坡 → 贾东坡; 周游 |
| 30 | 邮件审批工单 | 2017-12-21 → 2017-12-20 (-1d) |  | resources 贾东坡 → 贾东坡; 周游 |
| 32 | 流程定义 | 2017-12-21 → 2017-12-26 (+5d) |  | was named 处理工单; resources none → 贾东坡 |
| 33 | 流程部署与删除 | 2017-12-21 → 2017-12-28 (+7d) | 100% → 0% | was named 处理反馈工单; resources none → 贾东坡 |
| 34 | 流程api | 2017-12-21 → 2017-12-28 (+7d) | 100% → 0% | was named 系统审批工单; resources none → 贾东坡 |
| 35 | 创建与保存工单 | 2017-12-21 → 2017-12-22 (+1d) |  | was named 创建工单; resources none → 周游 |
| 36 | 工单修改与清空 | 2017-12-21 → 2017-12-26 (+5d) |  | was named 保存工单; resources none → 周游 |
| 38 | 工单流转状态实现 | 2017-12-21 → 2017-12-27 (+6d) | 100% → 25% | was named 修改工单; resources none → 黎杰 |
| 39 | 工单流转详情页实现 | 2017-12-21 → 2017-12-28 (+7d) | 100% → 6% | was named 提交工单; resources none → 黎杰 |
| 40 | 业务元素管理 | 2017-12-21 → 2017-12-26 (+5d) |  | was named 复制工单; resources none → 周游 |
| 41 | 工单文件的上传、下载 | 2017-12-21 → 2017-12-26 (+5d) |  | was named 关闭工单 |
| 43 | 查询工单 | 2017-12-21 → 2017-12-26 (+5d) |  | resources none → 周游 |
| 44 | 邮件审批工单 | 2017-12-21 → 2017-12-26 (+5d) |  | resources none → 周游 |

## Version 3 (saved 2017-12-26)

Note of the change: 解析完xml，存储

Complete tasks 32 → 30.

Removed: 45 数据字段表获取实现; 47 消息？

Changed:

| ID | Task | Start | Complete | Other |
| --- | --- | --- | --- | --- |
| 33 | 流程部署与删除 | 2017-12-28 → 2017-12-27 (-1d) |  |  |
| 38 | 工单流转状态实现 | 2017-12-27 → 2017-12-26 (-1d) |  |  |
| 39 | 工单流转详情页实现 | 2017-12-28 → 2017-12-27 (-1d) |  |  |
| 44 | 邮件审批工单 | 2017-12-26 → 2017-12-28 (+2d) | 100% → 25% | resources 周游 → 黎杰 |
| 45 | 待办实现、首页通知 |  |  | was named 待办实现、首页通知？ |

## Version 4 (saved 2017-12-26)

Note of the change: 解析完xml，存储

Added:

| ID | Task | Start |
| --- | --- | --- |
| 35 | 布置流程 | 2017-12-28 |
| 36 | 启动流程 | 2017-12-28 |
| 37 | 获取当前流程状态 | 2017-12-28 |
| 38 | 获取当前流程日志 | 2017-12-28 |
| 39 | 删除流程 | 2017-12-28 |
| 40 | 流程日志列表 | 2017-12-28 |
| 41 | 流程流转列表、处理人、处理时间点 | 2017-12-28 |
| 42 | calk | 2017-12-28 |

Changed:

| ID | Task | Start | Other |
| --- | --- | --- | --- |
| 33 | 流程部署与删除 | 2017-12-27 → 2017-12-28 (+1d) |  |
| 34 | **流程api** | 2017-12-28 → none | resources 贾东坡 → none |

## Version 5 (saved 2017-12-28)

Note of the change: 提数工单流程添加关闭

Complete tasks 30 → 27.

Added:

| ID | Task | Start |
| --- | --- | --- |
| 33 | 画流程图并定义流转关系 | 2017-12-28 |
| 35 | 流转打包 | 2017-12-28 |
| 36 | 流程包的上传 | 2017-12-28 |
| 37 | 流程包的展示界面 | 2017-12-28 |
| 51 | 申请人流转(待提交、待审批、待处理、处理中，待关闭、已关闭) | 2017-12-28 |
| 52 | 审批人流转信息(待审批、已审批) | 2017-12-28 |
| 53 | 处理人流转信息(待处理、处理中、待关闭、已关闭) | 2017-12-28 |
| 55 | 工单进度流转图 | 2017-12-28 |
| 56 | 元素列表按顺序展示 | 2017-12-28 |
| 57 | 日志列表 | 2017-12-28 |
| 59 | 元素的新增 | 2017-12-28 |
| 60 | 元素的删除 | 2017-12-28 |
| 61 | 元素的编辑 | 2017-12-28 |
| 62 | 元素的搜索(名称、描述、来源) | 2017-12-28 |
| 63 | **业务实体的管理** |  |
| 64 | 实体的新增 | 2017-12-28 |
| 65 | 实体的删除 | 2017-12-28 |
| 66 | 实体的修改 | 2017-12-28 |
| 67 | 实体的搜索 | 2017-12-28 |
| 68 | 实体与元素的关联管理 | 2017-12-28 |
| 72 | 根据工单号和创建时间搜索 | 2017-12-28 |
| 74 | 待审批 | 2017-12-28 |
| 75 | 待处理 | 2017-12-28 |
| 76 | 审批未通过 | 2017-12-28 |
| 77 | 处理中 | 2017-12-28 |
| 78 | 待关闭 | 2017-12-28 |

Changed:

| ID | Task | Start | Complete | Other |
| --- | --- | --- | --- | --- |
| 32 | **流程定义** | 2017-12-26 → none | 100% → 0% | resources 贾东坡 → none |
| 34 | **流程部署与删除** | 2017-12-28 → none |  | resources 贾东坡 → none |
| 50 | **工单流转状态实现** | 2017-12-26 → none | 25% → 0% | resources 黎杰 → none |
| 54 | **工单流转详情页实现** | 2017-12-27 → none | 6% → 0% | resources 黎杰 → none |
| 58 | **业务元素管理** | 2017-12-26 → none | 100% → 0% | resources 周游 → none |
| 71 | **查询工单** | 2017-12-26 → none | 100% → 0% | resources 周游 → none |
| 73 | **邮件审批工单** | 2017-12-28 → none | 25% → 0% | resources 黎杰 → none |

## Version 6 (saved 2018-01-02)

Note of the change: 调整工单工时

Complete tasks 27 → 56.

Added:

| ID | Task | Start | Constraint | Resources |
| --- | --- | --- | --- | --- |
| 47 | 新建 | 2018-01-02 | start no earlier than 2018-01-02 | 周游 |
| 48 | 修改 | 2018-01-04 | start no earlier than 2018-01-05 | 周游 |
| 49 | 清空 |  | start no earlier than 2018-01-05 | 周游 |
| 50 | 复制 |  | start no earlier than 2018-01-05 | 周游 |
| 51 | 提供人员拥有实体权限接口 |  | start no earlier than 2018-01-02 | 黎杰 |
| 56 | 搜索，根据工单号和时间段 |  | start no earlier than 2018-01-02 |  |
| 74 | 短信验证码 |  | finish no later than 2018-01-05 | 孟详龙 |
| 81 | 返回的逻辑 | 2017-12-22 |  |  |

Removed: 46 calk; 48 工单修改与清空; 49 工单复制; 71 查询工单; 72 根据工单号和创建时间搜索

Changed:

| ID | Task | Start | Complete | Other |
| --- | --- | --- | --- | --- |
| 1 | **设计** |  |  | constraint none → start no earlier than 2017-12-20 |
| 2 | **数据库设计** |  |  | constraint none → start no earlier than 2017-12-20 |
| 3 | 权限、人员、组 | 2017-12-26 → 2017-12-20 (-6d) |  | constraint none → finish no later than 2017-12-21 |
| 4 | 工单基础信息表 | 2017-12-25 → 2017-12-20 (-5d) |  | constraint start no earlier than 2017-12-19 → start no earlier than 2017-12-20 |
| 5 | 工单应用信息表 | 2017-12-28 → 2017-12-20 (-8d) | 50% → 100% | constraint none → start no earlier than 2017-12-21 |
| 6 | 工单流转信息表 | 2017-12-28 → 2017-12-20 (-8d) | 50% → 100% | constraint none → start no earlier than 2017-12-21 |
| 7 | 工单流转日志表 | 2017-12-22 → 2017-12-20 (-2d) |  | constraint start no earlier than 2017-12-19 → start no earlier than 2017-12-21 |
| 8 | 关闭工单评价表 | 2017-12-22 → 2017-12-20 (-2d) |  | constraint start no earlier than 2017-12-19 → start no earlier than 2017-12-21 |
| 9 | **功能设计** |  |  | constraint finish no later than 2017-12-20 → start no earlier than 2017-12-21 |
| 10 | 业务、审批人、处理人权限与角色 | 2017-12-20 → 2017-12-21 (+1d) | 100% → 0% | constraint none → finish no later than 2017-12-21 |
| 11 | 元素 | 2017-12-27 → 2017-12-21 (-6d) |  | constraint start no earlier than 2017-12-19 → start no earlier than 2017-12-22 |
| 12 | 复制功能 | 2017-12-26 → 2017-12-21 (-5d) |  | constraint start no earlier than 2017-12-19 → start no earlier than 2017-12-22 |
| 13 | 工单搜索 | 2017-12-26 → 2017-12-21 (-5d) |  | constraint start no earlier than 2017-12-19 → start no earlier than 2017-12-22 |
| 14 | 工单进度显示 | 2017-12-26 → 2017-12-21 (-5d) |  | constraint start no earlier than 2017-12-19 → start no earlier than 2017-12-22 |
| 15 | 任务提醒、通知实现 | 2017-12-26 → 2017-12-21 (-5d) |  | constraint start no earlier than 2017-12-19 → start no earlier than 2017-12-22 |
| 16 | 附件上传 | 2017-12-26 → 2017-12-21 (-5d) |  | constraint start no earlier than 2017-12-19 → start no earlier than 2017-12-22 |
| 17 | 附件下载 | 2017-12-26 → 2017-12-21 (-5d) |  | constraint start no earlier than 2017-12-19 → start no earlier than 2017-12-22 |
| 18 | 业务流程设计 |  |  | constraint none → start no earlier than 2017-12-21 |
| 19 | **界面设计** |  |  | constraint none → start no earlier than 2018-01-24 |
| 20 | 创建工单 | 2017-12-20 → 2017-12-25 (+5d) |  |  |
| 21 | 保存工单 | 2017-12-20 → 2017-12-25 (+5d) |  |  |
| 22 | 修改工单 | 2017-12-20 → 2017-12-25 (+5d) |  |  |
| 23 | 提交工单 | 2017-12-20 → 2017-12-25 (+5d) |  |  |
| 24 | 复制工单 | 2017-12-20 → 2017-12-25 (+5d) |  |  |
| 25 | 关闭工单 | 2017-12-20 → 2017-12-25 (+5d) |  |  |
| 26 | 查询工单 | 2017-12-20 → 2017-12-25 (+5d) |  |  |
| 27 | 处理工单 | 2017-12-20 → 2017-12-25 (+5d) |  |  |
| 28 | 处理反馈工单 | 2017-12-20 → 2017-12-25 (+5d) |  |  |
| 29 | 系统审批工单 | 2017-12-20 → 2017-12-25 (+5d) |  |  |
| 30 | 邮件审批工单 | 2017-12-20 → 2017-12-25 (+5d) |  |  |
| 31 | **开发** |  |  | constraint none → start no earlier than 2018-01-02 |
| 33 | 画流程图并定义流转关系 | 2017-12-28 → 2018-01-02 (+5d) | 0% → 100% | constraint none → finish no later than 2018-01-02; resources none → 贾东坡 |
| 35 | 流转打包 | 2017-12-28 → 2018-01-04 (+7d) | 0% → 100% | constraint none → finish no later than 2018-01-04; resources none → 贾东坡 |
| 36 | 流程包的上传 | 2017-12-28 → 2017-12-22 (-6d) | 0% → 100% | resources none → 贾东坡 |
| 37 | 流程包的展示界面 | 2017-12-28 → 2018-01-05 (+8d) | 0% → 100% | constraint none → finish no later than 2018-01-05; resources none → 贾东坡 |
| 39 | 布置流程 | 2017-12-28 → 2018-01-08 (+11d) | 0% → 100% | constraint none → finish no later than 2018-01-08; resources none → 贾东坡 |
| 40 | 启动流程 | 2017-12-28 → 2018-01-09 (+12d) | 0% → 100% | constraint none → finish no later than 2018-01-09; resources none → 贾东坡 |
| 41 | 获取当前流程状态 | 2017-12-28 → 2018-01-09 (+12d) | 0% → 100% | constraint none → finish no later than 2018-01-09; resources none → 贾东坡 |
| 42 | 获取当前流程日志 | 2017-12-28 → 2018-01-10 (+13d) | 0% → 100% | constraint none → finish no later than 2018-01-10; resources none → 贾东坡 |
| 43 | 删除流程 | 2017-12-28 → 2018-01-10 (+13d) | 0% → 100% | constraint none → finish no later than 2018-01-10; resources none → 贾东坡 |
| 44 | 流程日志列表 | 2017-12-28 → 2018-01-11 (+14d) | 0% → 100% | constraint none → finish no later than 2018-01-11; resources none → 贾东坡 |
| 45 | 流程流转列表、处理人、处理时间点 | 2017-12-28 → 2018-01-11 (+14d) | 0% → 100% | constraint none → finish no later than 2018-01-12; resources none → 贾东坡 |
| 46 | **工单信息维护** | 2017-12-22 → none | 100% → 0% | was named 创建与保存工单; resources 周游 → none |
| 52 | **工单流转状态** |  |  | was named 工单流转状态实现 |
| 53 | 申请人流转(待提交、待审批、待处理、处理中，待关闭、已关闭) | 2017-12-28 → none | 0% → 100% | constraint none → finish no later than 2018-01-02; resources none → 黎杰 |
| 54 | 审批人流转信息(待审批、已审批) | 2017-12-28 → none | 0% → 100% | constraint none → finish no later than 2018-01-03; resources none → 黎杰 |
| 55 | 处理人流转信息(待处理、处理中、待关闭、已关闭) | 2017-12-28 → none | 0% → 100% | constraint none → finish no later than 2018-01-03; resources none → 黎杰 |
| 58 | 工单进度流转图 | 2017-12-28 → none | 0% → 100% | constraint none → finish no later than 2018-01-04; resources none → 黎杰 |
| 59 | 元素列表按顺序展示 | 2017-12-28 → none | 0% → 100% | constraint none → finish no later than 2018-01-04; resources none → 黎杰 |
| 60 | 日志列表 | 2017-12-28 → none | 0% → 100% | constraint none → finish no later than 2018-01-05; resources none → 黎杰 |
| 62 | 新增 | 2017-12-28 → none | 0% → 50% | was named 元素的新增; constraint none → start no earlier than 2018-01-02; resources none → 周游 |
| 63 | 修改 | 2017-12-28 → none | 0% → 50% | was named 元素的删除; constraint none → start no earlier than 2017-12-25; resources none → 周游 |
| 64 | 删除 | 2017-12-28 → none | 0% → 100% | was named 元素的编辑; constraint none → start no earlier than 2017-12-26; resources none → 周游 |
| 65 | 元素的搜索(名称、描述、来源) | 2017-12-28 → none | 0% → 100% | constraint none → start no earlier than 2017-12-26; resources none → 周游 |
| 67 | 实体的新增 | 2017-12-28 → none | 0% → 100% | constraint none → finish no later than 2017-12-28 |
| 68 | 实体的删除 | 2017-12-28 → none | 0% → 100% | constraint none → finish no later than 2017-12-28 |
| 69 | 实体的修改 | 2017-12-28 → none | 0% → 100% | constraint none → finish no later than 2017-12-29 |
| 70 | 实体的搜索 | 2017-12-28 → none | 0% → 100% | constraint none → finish no later than 2018-01-02 |
| 71 | 实体与元素的关联管理 | 2017-12-28 → none | 0% → 100% | constraint none → finish no later than 2018-01-02 |
| 72 | 工单文件的上传、下载 | 2017-12-26 → 2017-12-28 (+2d) |  | resources none → 孟详龙 |
| 73 | 附件加密及附件的存储、获取api | 2017-12-28 → none | 0% → 33% | constraint none → finish no later than 2018-01-04; resources 黎杰 → none |
| 76 | 待审批 | 2017-12-28 → 2017-12-21 (-7d) | 0% → 50% | resources none → 孟详龙 |
| 77 | 待处理 | 2017-12-28 → 2017-12-20 (-8d) | 0% → 80% | resources none → 孟详龙 |
| 78 | 审批未通过 | 2017-12-28 → 2017-12-25 (-3d) | 0% → 100% | resources none → 孟详龙 |
| 79 | 处理中 | 2017-12-28 → 2017-12-26 (-2d) | 0% → 100% | resources none → 孟详龙 |
| 80 | 待关闭 | 2017-12-28 → 2017-12-27 (-1d) | 0% → 100% | resources none → 孟详龙 |
| 82 | 待办实现、首页通知 | 2017-12-28 → 2017-12-22 (-6d) | 0% → 100% |  |

## Version 7 (saved 2018-01-08)

Note of the change: 流程相关操作

Added:

| ID | Task | Constraint |
| --- | --- | --- |
| 51 | 查看 | start no earlier than 2018-01-05 |
| 84 | 工单审批人员表管理页面 | start no earlier than 2018-01-03 |

Changed:

| ID | Task | Other |
| --- | --- | --- |
| 75 | 短信验证码(点击下载时自动下发给创建人一次) | was named 短信验证码 |

## Version 8 (saved 2018-02-26)

Note of the change: 2018年计划

Changed:

| ID | Task | Other |
| --- | --- | --- |
| 84 | 工单审批人员表管理页面 | resources none → 贾东坡 |
